# 简单项目计划

Schedule from MS Project, 2020-11-02 to 2020-12-16, costs in ¥.

## Calendars

- Standard: Mon-Fri 08:00-12:00, 13:00-17:00; Sat-Sun off. Exceptions (off unless hours are given): 2020-11-22 08:00-12:00, 13:00-17:00.

## Resources

| Resource | Rate | Notes |
| --- | --- | --- |
| 产品经理 | 45 | 何佳 |
| 技术专家 | 40 | 付静怡 |
| 项目经理 | 50 | 李雨竹 |
| UI专家 | 40 | 李晓涵 |
| 测试专家 | 40 | 解宇欣 |
| 间接成本 |  |  |
| 测试员1 | 35 | 何佳 |
| 测试员2 | 35 | 李晓涵 |
| 测试员3 | 35 | 解宇欣 |
| 测试员4 | 35 | 付静怡 |
| 测试员5 | 35 | 李雨竹 |

## Schedule

| ID | WBS | Task | Type | Duration | Start | Finish | Predecessors | Resources | Work | Cost |
| --- | --- | --- | --- | --- | --- | --- | --- | --- | --- | --- |
| 1 | 1 | **启动** |  | 6d | 2020-11-02 | 2020-11-08 |  | 间接成本 [0.1%] | 96h | 4,740 |
| 2 | 1.1 | 组建核心团队 | manual | 2d | 2020-11-02 | 2020-11-03 |  | 产品经理 | 16h | 720 |
| 3 | 1.2 | 干系人分析 | manual | 1d | 2020-11-04 | 2020-11-04 | 2 | 产品经理 | 8h | 360 |
| 4 | 1.3 | 里程碑计划 | manual | 2d | 2020-11-05 | 2020-11-06 | 2, 3 | 技术专家 | 16h | 640 |
| 5 | 1.4 | 制定项目章程 | manual | 2d | 2020-11-05 | 2020-11-06 | 2, 3 | 项目经理 | 16h | 800 |
| 6 | 1.5 | 项目启动大会 | manual | 1d | 2020-11-08 | 2020-11-08 |  | 项目经理; 技术专家; 产品经理; UI专家; 测试专家 | 40h | 1,720 |
| 7 | 2 | **规划** |  | 29d | 2020-11-09 | 2020-12-16 |  | 间接成本 [0.1%] | 2040h | 72,400 |
| 8 | 2.1 | **规划范围** |  | 28d | 2020-11-09 | 2020-12-15 |  |  | 2040h | 71,400 |
| 9 | 2.1.1 | **框架Selenium完善** |  | 2d | 2020-11-09 | 2020-11-10 |  |  | 80h | 2,800 |
| 10 | 2.1.1.1 | 完善框架 | manual | 2d | 2020-11-09 | 2020-11-10 |  | 测试员1; 测试员2; 测试员3; 测试员4; 测试员5 | 80h | 2,800 |
| 11 | 2.1.2 | **美化测试报告** |  | 3d | 2020-11-11 | 2020-11-13 |  |  | 96h | 3,360 |
| 12 | 2.1.2.1 | ReportNG美化测试 | manual | 2d | 2020-11-11 | 2020-11-12 |  | 测试员1; 测试员2 | 32h | 1,120 |
| 13 | 2.1.2.2 | Freemarker+Selenium+TestNG | manual | 3d | 2020-11-11 | 2020-11-13 |  | 测试员4; 测试员3 | 48h | 1,680 |
| 14 | 2.1.2.3 | testng-xslt | manual | 2d | 2020-11-11 | 2020-11-12 |  | 测试员5 | 16h | 560 |
| 15 | 2.1.3 | **手工测试** |  | 14d | 2020-11-09 | 2020-11-25 |  |  | 632h | 22,120 |
| 16 | 2.1.3.1 | 测试计划 | manual | 2d | 2020-11-09 | 2020-11-10 |  | 测试员5; 测试员4; 测试员3; 测试员2; 测试员1 | 80h | 2,800 |
| 17 | 2.1.3.2 | **黑盒测试** |  | 8d | 2020-11-11 | 2020-11-20 | 16 |  | 320h | 11,200 |
| 18 | 2.1.3.2.1 | **前台** |  | 2d | 2020-11-11 | 2020-11-12 |  |  | 104h | 3,640 |
| 19 | 2.1.3.2.1.1 | 附近职位 | manual | 1d | 2020-11-11 | 2020-11-11 |  | 测试员1 | 8h | 280 |
| 20 | 2.1.3.2.1.2 | 普工专区 | manual | 1d | 2020-11-11 | 2020-11-11 |  | 测试员1 | 8h | 280 |
| 21 | 2.1.3.2.1.3 | 兼职职位 | manual | 1d | 2020-11-12 | 2020-11-12 |  | 测试员1 | 8h | 280 |
| 22 | 2.1.3.2.1.4 | HR工具箱 | manual | 1d | 2020-11-12 | 2020-11-12 |  | 测试员1 | 8h | 280 |
| 23 | 2.1.3.2.1.5 | 找企业 | manual | 1d | 2020-11-12 | 2020-11-12 |  | 测试员1 | 8h | 280 |
| 24 | 2.1.3.2.1.6 | 其他 | manual | 2d | 2020-11-11 | 2020-11-12 |  | 测试员3; 测试员2; 测试员4; 测试员5 | 64h | 2,240 |

Notes:
- 1: 这是摘要任务。使用摘要任务以帮助您在节中组织项目。
- 4: 这是里程碑任务。将任务工期设置为 0d 以标记项目中的事件。

| ID | WBS | Task | Type | Duration | Start | Finish | Predecessors | Total slack | Constraint | Resources | Work | Cost |
| --- | --- | --- | --- | --- | --- | --- | --- | --- | --- | --- | --- | --- |
| 25 | 2.1.3.2.2 | **后台** |  | 5d | 2020-11-16 | 2020-11-20 |  |  |  |  | 216h | 7,560 |
| 26 | 2.1.3.2.2.1 | 运营-商城 | manual | 1d | 2020-11-13 | 2020-11-13 |  |  |  | 测试员1 | 8h | 280 |
| 27 | 2.1.3.2.2.2 | 运营-广告 | manual | 1d | 2020-11-13 | 2020-11-13 |  |  |  | 测试员1 | 8h | 280 |
| 28 | 2.1.3.2.2.3 | 运营-财务 | manual | 1d | 2020-11-15 | 2020-11-15 |  |  |  | 测试员1 | 8h | 280 |
| 29 | 2.1.3.2.2.4 | 运营-专题 | manual | 1d | 2020-11-16 | 2020-11-16 |  |  |  | 测试员1 | 8h | 280 |
| 30 | 2.1.3.2.2.5 | 运营-举报 | manual | 1d | 2020-11-18 | 2020-11-18 |  |  |  | 测试员1 | 8h | 280 |
| 31 | 2.1.3.2.2.6 | 运营-营销 | manual | 1d | 2020-11-18 | 2020-11-18 |  |  |  | 测试员1 | 8h | 280 |
| 32 | 2.1.3.2.2.7 | 首页界面 | manual | 1d | 2020-11-20 | 2020-11-20 |  |  |  | 测试员1 | 8h | 280 |
| 33 | 2.1.3.2.2.8 | 其他 | manual | 5d | 2020-11-16 | 2020-11-20 |  |  |  | 测试员5; 测试员4; 测试员2; 测试员3 | 160h | 5,600 |
| 34 | 2.1.3.3 | **探索性测试** |  | 3d | 2020-11-21 | 2020-11-23 | 16 |  |  |  | 192h | 6,720 |
| 35 | 2.1.3.3.1 | **前台** |  | 1d? | 2020-11-21 | 2020-11-21 |  |  |  |  | 72h | 2,520 |
| 36 | 2.1.3.3.1.1 | 附近职位 | manual | 1d | 2020-11-21 | 2020-11-21 |  |  |  | 测试员1 | 8h | 280 |
| 37 | 2.1.3.3.1.2 | 普工专区 | manual | 1d | 2020-11-21 | 2020-11-21 |  |  |  | 测试员1 | 8h | 280 |
| 38 | 2.1.3.3.1.3 | 兼职职位 | manual | 1d | 2020-11-21 | 2020-11-21 |  |  |  | 测试员1 | 8h | 280 |
| 39 | 2.1.3.3.1.4 | HR工具箱 | manual | 1d | 2020-11-21 | 2020-11-21 |  |  |  | 测试员1 | 8h | 280 |
| 40 | 2.1.3.3.1.5 | 找企业 | manual | 1d | 2020-11-21 | 2020-11-21 |  |  |  | 测试员1 | 8h | 280 |
| 41 | 2.1.3.3.1.6 | 其他 | manual | 1d | 2020-11-21 | 2020-11-21 |  |  |  | 测试员3; 测试员2; 测试员4; 测试员5 | 32h | 1,120 |
| 42 | 2.1.3.3.2 | **后台** |  | 2d | 2020-11-22 | 2020-11-23 |  |  |  |  | 120h | 4,200 |
| 43 | 2.1.3.3.2.1 | 运营-商城 | manual | 1d | 2020-11-22 | 2020-11-22 |  |  |  | 测试员1 | 8h | 280 |
| 44 | 2.1.3.3.2.2 | 运营-广告 | manual | 1d | 2020-11-22 | 2020-11-22 |  |  |  | 测试员1 | 8h | 280 |
| 45 | 2.1.3.3.2.3 | 运营-财务 |  | 1d | 2020-11-22 | 2020-11-22 |  | 18d | start no earlier than 2020-11-22 | 测试员1 | 8h | 280 |
| 46 | 2.1.3.3.2.4 | 运营-专题 |  | 1d | 2020-11-23 | 2020-11-23 |  | 17d | finish no earlier than 2020-11-23 | 测试员1 | 8h | 280 |
| 47 | 2.1.3.3.2.5 | 运营-举报 |  | 1d | 2020-11-23 | 2020-11-23 |  | 17d | finish no earlier than 2020-11-23 | 测试员1 | 8h | 280 |
| 48 | 2.1.3.3.2.6 | 运营-营销 |  | 1d | 2020-11-23 | 2020-11-23 |  | 17d | finish no earlier than 2020-11-23 | 测试员1 | 8h | 280 |
| 49 | 2.1.3.3.2.7 | 首页界面 |  | 1d | 2020-11-23 | 2020-11-23 |  | 17d | finish no earlier than 2020-11-23 | 测试员1 | 8h | 280 |
| 50 | 2.1.3.3.2.8 | 其他 | manual | 2d | 2020-11-22 | 2020-11-23 |  |  |  | 测试员3; 测试员2; 测试员4; 测试员5 | 64h | 2,240 |
| 51 | 2.1.3.4 | 测试报告 | manual | 1d | 2020-11-25 | 2020-11-25 | 17, 34 |  |  | 测试员5; 测试员4; 测试员3; 测试员2; 测试员1 | 40h | 1,400 |

| ID | WBS | Task | Type | Duration | Start | Finish | Predecessors | Resources | Work | Cost |
| --- | --- | --- | --- | --- | --- | --- | --- | --- | --- | --- |
| 52 | 2.1.4 | **Jenkins学习** |  | 17d | 2020-11-16 | 2020-12-06 |  |  | 576h | 20,160 |
| 53 | 2.1.4.1 | **自动化测试** |  | 12d | 2020-11-16 | 2020-11-29 |  | 测试员5; 测试员4; 测试员3; 测试员2; 测试员1 | 480h | 16,800 |
| 54 | 2.1.4.1.1 | 冒烟测试用例编写 | manual | 2d | 2020-11-16 | 2020-11-17 |  |  |  |  |
| 55 | 2.1.4.1.2 | **代码实现用例** |  | 3d | 2020-11-18 | 2020-11-20 | 54 |  |  |  |
| 56 | 2.1.4.1.2.1 | 前台 | manual | 1d | 2020-11-18 | 2020-11-18 |  |  |  |  |
| 57 | 2.1.4.1.2.2 | 后台 | manual | 2d | 2020-11-19 | 2020-11-20 |  |  |  |  |
| 58 | 2.1.4.1.3 | **实现Excel数据驱动** |  | 3d | 2020-11-23 | 2020-11-25 | 55 |  |  |  |
| 59 | 2.1.4.1.3.1 | 前台 | manual | 1d | 2020-11-23 | 2020-11-23 |  |  |  |  |
| 60 | 2.1.4.1.3.2 | 后台 | manual | 1d | 2020-11-25 | 2020-11-25 |  |  |  |  |
| 61 | 2.1.4.1.4 | **用例整合运行** |  | 3d | 2020-11-26 | 2020-11-29 | 55, 58 |  |  |  |
| 62 | 2.1.4.1.4.1 | 前台 | manual | 2d | 2020-11-26 | 2020-11-27 |  |  |  |  |
| 63 | 2.1.4.1.4.2 | 后台 | manual | 1d | 2020-11-29 | 2020-11-29 |  |  |  |  |
| 64 | 2.1.4.2 | 服务器搭建 | manual | 2d | 2020-12-02 | 2020-12-03 |  | 测试员5 | 16h | 560 |
| 65 | 2.1.4.3 | 实现持续性集成 | manual | 2d | 2020-12-04 | 2020-12-05 | 53, 64 | 测试员5; 测试员4; 测试员3; 测试员2; 测试员1 | 80h | 2,800 |
| 66 | 2.1.5 | **渗透测试** |  | 11d | 2020-11-30 | 2020-12-14 |  | 测试员5; 测试员4; 测试员3; 测试员2; 测试员1 | 440h | 15,400 |
| 67 | 2.1.5.1 | 下载安装bluecms_1.6 | manual | 1d | 2020-11-30 | 2020-11-30 |  |  |  |  |
| 68 | 2.1.5.2 | 信息收集 | manual | 1d | 2020-12-02 | 2020-12-02 |  |  |  |  |
| 69 | 2.1.5.3 | 利用burpsuit进行漏洞扫描 | manual | 3d | 2020-12-03 | 2020-12-05 |  |  |  |  |
| 70 | 2.1.5.4 | 爬取网站 | manual | 2d | 2020-12-06 | 2020-12-07 |  |  |  |  |
| 71 | 2.1.5.5 | 自动化攻击 | manual | 2d | 2020-12-08 | 2020-12-09 |  |  |  |  |
| 72 | 2.1.5.6 | 对网站进行手工测试 | manual | 3d | 2020-12-10 | 2020-12-12 |  |  |  |  |
| 73 | 2.1.5.7 | 发现漏洞 | manual | 1d | 2020-12-14 | 2020-12-14 |  |  |  |  |
| 74 | 2.1.6 | **接口测试** |  | 6d | 2020-12-07 | 2020-12-14 |  |  | 216h | 7,560 |
| 75 | 2.1.6.1 | jsp学习 | manual | 3d | 2020-12-09 | 2020-12-11 |  | 测试员1; 测试员3; 测试员4 | 72h | 2,520 |
| 76 | 2.1.6.2 | 数据库编写 | manual | 3d | 2020-12-09 | 2020-12-11 |  | 测试员2; 测试员5 | 48h | 1,680 |
| 77 | 2.1.6.3 | 平台前台简单编写 | manual | 3d | 2020-12-09 | 2020-12-11 |  | 测试员2; 测试员5 | 48h | 1,680 |
| 78 | 2.1.6.4 | 平台后台简单编写 | manual | 2d | 2020-12-12 | 2020-12-13 |  | 测试员1; 测试员3; 测试员4 | 48h | 1,680 |

| ID | WBS | Task | Type | Duration | Start | Finish | Total slack |
| --- | --- | --- | --- | --- | --- | --- | --- |
| 79 | 3 | **下面的注释掉** |  | 1d | 2020-11-17 | 2020-11-17 | 0d |
| 80 | 3.1 | **规划成本** |  | 1d | 2020-11-17 | 2020-11-17 |  |
| 81 | 3.1.1 | 项目成本估算 | manual | 1d | 2020-11-17 | 2020-11-17 |  |
| 82 | 3.1.2 | 项目预算 | milestone, manual | 0d | 2020-11-17 | 2020-11-17 |  |
| 83 | 3.1.3 | 形成范围基准 | manual | 1d? | 2020-11-17 | 2020-11-17 |  |
| 84 | 3.2 | **规划质量** |  | 1d | 2020-11-17 | 2020-11-17 |  |
| 85 | 3.2.1 | 制定测试计划 | manual | 1d? | 2020-11-17 | 2020-11-17 |  |
| 86 | 3.2.2 | 制定测试用例 | manual | 1d | 2020-11-17 | 2020-11-17 |  |
| 87 | 3.3 | **规划人力资源** |  | 1d | 2020-11-17 | 2020-11-17 |  |
| 88 | 3.3.1 | 制定人力资源计划 | manual | 1d | 2020-11-17 | 2020-11-17 |  |
| 89 | 3.3.2 | 制定人员配备管理计划 | manual | 1d? | 2020-11-17 | 2020-11-17 |  |
| 90 | 3.4 | **规划沟通** |  | 1d | 2020-11-17 | 2020-11-17 |  |
| 91 | 3.4.1 | 制定沟通管理计划 | manual | 1d | 2020-11-17 | 2020-11-17 |  |
| 92 | 3.5 | **规划采购** |  | 1d | 2020-11-17 | 2020-11-17 |  |
| 93 | 3.5.1 | 自制外购分析 | manual | 1d | 2020-11-17 | 2020-11-17 |  |
| 94 | 3.5.2 | 制定采购文件 | manual | 1d? | 2020-11-17 | 2020-11-17 |  |
| 95 | 3.6 | **规划风险** |  | 1d | 2020-11-17 | 2020-11-17 |  |
| 96 | 3.6.1 | 识别风险 | manual | 1d? | 2020-11-17 | 2020-11-17 |  |
| 97 | 3.6.2 | 风险分析 | manual | 1d? | 2020-11-17 | 2020-11-17 |  |
| 98 | 3.6.3 | 制定风险登记册 | manual | 1d | 2020-11-17 | 2020-11-17 |  |
| 99 | 3.6.4 | 规划整合 | manual | 1d? | 2020-11-17 | 2020-11-17 |  |
